# Pfizer Continuum Project Plan

Schedule from MS Project, 2012-12-03 to 2014-02-05, A marks actual dates.

## Calendars

- Standard: Mon-Fri 08:00-12:00, 13:00-17:00; Sat-Sun off. Exceptions (off unless hours are given): 2013-11-28 to 2013-11-29 (Thanksgiving), 2013-12-25 (Christmas), 2014-01-01 (New Years).

## Resources

| Resource |
| --- |
| Bala |
| Smita |
| Nelli |
| Paula |
| Hugh |
| Steve Matyas |
| Todd |
| Steve L |
| Sohal |
| Harsha |
| Naveen |
| BDA Team |
| Systems Team |
| QA3 |
| QA4 |
| QA5 |
| Vrushali |
| Max |
| VCDE |
| Anu |
| rushali |
| CTEP |
| caXchange |
| C3PR |
| caAERS |
| PSC |
| LV |
| BDA |
| "C3PR |
| Documentation |
| caGrid |
| QA |
| BAM |
| Edmond |
| NCI |
| SAIC-F |
| Web Team |
| Bill Dyer |
| CCTS Team |
| John S |
| Patrick |
| Architects |
| Christo |
| John |
| Rhett |
| Nellie |
| Steve |
| Kalpesh |
| David L |
| Stevel L |
| Kumar C |
| Gia |
| Wendy |
| Raj |
| Steve M |
| Lauren |
| Systems |
| CTRO |
| Hannes |
| SMEs |
| Gisele |
| Joe |
| CTRP Dev team |
| CBIIT |
| All |
| Analysts |
| TBD |
| Charles |
| ESST |
| Developers |
| Lisa |
| Christophe |
| Krishna |
| QA1 |
| QA2 |
| David |
| Security |
| Arch |
| Tech Leads |
| Paula B |
| Kalpana |
| KK |
| Abe |
| Kim |
| Vijay |
| CAT |
| George |
| Larry |
| Michael O |
| Resource 1 |
| Resource 2 |
| Resource3 |
| Resource 4 |
| Resource 5 |
| Gisele S |
| Dianne R |
| HR |
| NA |
| SL |
| ScenPro |
| 5AM |
| TP |
| EM |
| KE |
| JM |
| DL |
| Paul |
| Michael |
| Eilis |
| Team |
| Dev team |
| Ram P |
| NIH 508 team |
| Bryan |
| Bill D |
| Marina |
| Ye |
| Rashmi |
| Ann Wiley |
| Winston |
| QA* |
| Systems* |
| Sree |
| S |
| Systemss* |
| Mike |
| GQR |
| Juli |
| Sichen |
| Winstion |
| JJ |

## Schedule

| ID | WBS | Task | Duration | Start | Finish | Predecessors | Complete | Remaining | Total slack | Constraint | Resources | Work | Actual work |
| --- | --- | --- | --- | --- | --- | --- | --- | --- | --- | --- | --- | --- | --- |
| 1 | 1 | **caArray** | 304d? | 2012-12-03 A | 2014-02-05 |  | 68% | 98.24d? | 0d | start no earlier than 2012-12-03 |  | 12199.6h | 5706.8h |
| 2 | 1.1 | **caArray 2.5.1** | 216d? | 2012-12-03 A | 2013-09-30 |  | 99% | 0.84d? | 88d |  |  | 2591.6h | 2575.6h |
| 3 | 1.1.1 | MILESTONE: PROJECT KICKOFF | 1d | 2012-12-06 A | 2012-12-06 A |  | 100% |  |  | start no earlier than 2012-12-06 |  |  |  |
| 4 | 1.1.2 | User Support - Rembrandt, etc. | 3d | 2012-12-03 A | 2012-12-05 A |  | 100% |  |  |  | Winston; Rashmi | 48h | 48h |
| 5 | 1.1.3 | Support Apache upgrade of all tiers | 5d | 2012-12-06 A | 2012-12-12 A | 4 | 100% |  |  |  | Rashmi | 40h | 40h |
| 6 | 1.1.4 | Review TRANSCEND UAT plan | 1d | 2012-12-13 A | 2012-12-13 A | 5 | 100% |  |  |  | Rashmi | 8h | 8h |
| 7 | 1.1.5 | Vacation and Team Member Unavailability | 10d | 2012-12-14 A | 2012-12-27 A | 6 | 100% |  |  |  | Winston; Rashmi | 160h | 160h |
| 8 | 1.1.6 | OSDI: Obtain GitHub accounts for all team members | 1d | 2012-12-28 A | 2012-12-28 A | 7 | 100% |  |  |  | Winston; Rashmi | 16h | 16h |
| 9 | 1.1.7 | OSDI: Do initial analysis, generate author list, fill out checklist | 3d | 2012-12-31 A | 2013-01-02 A | 8 | 100% |  |  |  | Winston; Rashmi | 48h | 48h |
| 10 | 1.1.8 | Rewrite PMP in EPLC format and update Project Plan | 2d | 2013-01-03 A | 2013-01-04 A | 9 | 100% |  |  |  | Rashmi | 16h | 16h |
| 11 | 1.1.9 | OSDI: Obtain access to NCIP channel in GitHub (Dependency) | 7d | 2012-12-31 A | 2013-01-08 A | 8 | 100% |  |  |  | Sree; Larry | 112h | 112h |
| 12 | 1.1.10 | OSDI: Generate a local git copy | 2d | 2013-01-03 A | 2013-01-04 A | 9 | 100% |  |  |  | Winston | 16h | 16h |
| 13 | 1.1.11 | OSDI: Split software and tools from docs and test data. | 3d | 2013-01-07 A | 2013-01-09 A | 12 | 100% |  |  |  | Winston | 24h | 24h |
| 14 | 1.1.12 | OSDI: Migrate local git copy to GitHub under NCIP | 4d | 2013-01-10 A | 2013-01-15 A | 11, 13 | 100% |  |  |  | Winston | 32h | 32h |
| 15 | 1.1.13 | OSDI: Change license/copyright text and merge into GitHub repo. | 2d | 2013-01-16 A | 2013-01-17 A | 14 | 100% |  |  |  | Winston | 16h | 16h |
| 16 | 1.1.14 | OSDI: Make build changes. (Remove svn dependencies, pull jboss from the tools directory, etc.) | 6d | 2013-01-18 A | 2013-01-25 A | 15 | 100% |  |  |  | Winston | 48h | 48h |
| 17 | 1.1.15 | OSDI: Update README and other documentation | 1d | 2013-02-04 A | 2013-02-04 A | 16 | 100% |  |  |  | Winston; Rashmi | 16h | 16h |
| 18 | 1.1.16 | Section 508 Compliance Improvements | 21d | 2013-02-05 A | 2013-03-05 A | 17 | 100% |  |  |  | Winston; Rashmi | 336h | 336h |
| 19 | 1.1.17 | OSDI: Work with the Systems team to update and test the Dev AHP build. | 4d | 2013-02-27 A | 2013-03-04 A | 16 | 100% |  |  |  | Winston; Systems | 64h | 64h |
| 20 | 1.1.18 | OSDI: Final test of AHP build on Dev tier | 1d | 2013-03-05 A | 2013-03-05 A | 19 | 100% |  |  |  | Winston; Systems; Rashmi | 24h | 24h |
| 21 | 1.1.19 | OSDI: Work with the Systems team to update/test AHP on QA/STAGE | 15d | 2013-03-06 A | 2013-03-26 A | 20 | 100% |  |  |  | Winston; Rashmi | 240h | 240h |
| 22 | 1.1.20 | Performance and other Bug Fixes | 20d | 2013-03-12 A | 2013-04-08 A | 20 | 100% |  |  | start no earlier than 2013-03-12 | Winston | 160h | 160h |
| 23 | 1.1.21 | OSDI: Work with the Systems team to update/test AHP on PROD,Curation,Training | 15d | 2013-03-27 A | 2013-04-16 A | 21 | 100% |  |  |  | Winston | 120h | 120h |
| 24 | 1.1.22 | **QA Tier** | 120d? | 2013-04-09 A | 2013-09-23 A |  | 100% |  |  |  |  | 951.6h | 951.6h |
| 25 | 1.1.22.1 | Automated Regression Testing on QA tier | 5d | 2013-04-09 A | 2013-04-15 A | 22 | 100% |  |  |  | QA* | 40h | 40h |
| 26 | 1.1.22.2 | Manual Regression Testing on QA tier | 4d | 2013-04-16 A | 2013-04-19 A | 25 | 100% |  |  |  | QA* | 32h | 32h |
| 27 | 1.1.22.3 | Installer Testing | 4d | 2013-04-22 A | 2013-04-25 A | 26 | 100% |  |  |  | QA* | 32h | 32h |
| 28 | 1.1.22.4 | QA reviews Section 508 compliance report | 2d | 2013-04-26 A | 2013-04-29 A | 27 | 100% |  |  |  | QA* | 16h | 16h |
| 29 | 1.1.22.5 | Appscan on QA tier | 20d | 2013-04-09 A | 2013-05-06 A | 22 | 100% |  |  |  | Systems* | 160h | 160h |
| 30 | 1.1.22.6 | Test Results Review and Reporting | 3d | 2013-05-07 A | 2013-05-09 A | 29, 25, 26, 27, 28 | 100% |  |  |  | QA* | 24h | 24h |
| 31 | 1.1.22.7 | Bug Fixes - Critical | 14d | 2013-05-10 A | 2013-06-04 A | 30 | 100% |  |  |  | Winston | 112h | 112h |
| 32 | 1.1.22.8 | QA critical fixes | 5d | 2013-06-04 A | 2013-06-11 A | 31 | 100% |  |  |  | QA* | 40h | 40h |
| 33 | 1.1.22.9 | Redo Appscan on QA tier | 10.7d | 2013-06-04 A | 2013-06-18 A | 31 | 100% |  |  | finish no earlier than 2013-06-18 | Systems* | 85.6h | 85.6h |
| 34 | 1.1.22.10 | QA RC3 (OpenSymphony File Reference Change) | 2d | 2013-06-19 A | 2013-06-20 A | 33 | 100% |  |  |  | Marina [12.5%] | 2h | 2h |

| ID | WBS | Task | Type | Duration | Start | Finish | Predecessors | Complete | Remaining | Total slack | Constraint | Resources | Work | Actual work |
| --- | --- | --- | --- | --- | --- | --- | --- | --- | --- | --- | --- | --- | --- | --- |
| 35 | 1.1.22.11 | **Struts patch** |  | 44d? | 2013-07-18 A | 2013-09-17 A | 34 | 100% |  |  |  |  | 384h | 384h |
| 36 | 1.1.22.11.1 | Upgrade to Struts 2.3.15.1 and fix anything that breaks |  | 2d | 2013-07-18 A | 2013-07-19 A |  | 100% |  |  | start no earlier than 2013-07-18 | Winston | 16h | 16h |
| 37 | 1.1.22.11.2 | Obtain permission to deploy to QA Tier | milestone | 0d | 2013-07-19 A | 2013-07-19 A | 36 | 100% |  |  |  | Mike |  |  |
| 38 | 1.1.22.11.3 | Deploy to the QA Tier |  | 1d | 2013-07-22 A | 2013-07-22 A | 37 | 100% |  |  |  | Marina | 8h | 8h |
| 39 | 1.1.22.11.4 | Smoke test |  | 3d | 2013-07-23 A | 2013-07-25 A | 38 | 100% |  |  |  | Marina | 24h | 24h |
| 40 | 1.1.22.11.5 | Run Section 508 scan and manage issues |  | 1d | 2013-07-25 A | 2013-07-25 A | 38 | 100% |  |  |  | Mike | 8h | 8h |
| 41 | 1.1.22.11.6 | Test local install |  | 2d | 2013-07-26 A | 2013-07-29 A | 39 | 100% |  |  |  | Marina | 16h | 16h |
| 42 | 1.1.22.11.7 | Test local upgrade |  | 2d | 2013-07-23 A | 2013-07-30 A | 41 | 100% |  |  |  | Marina | 16h | 16h |
| 43 | 1.1.22.11.8 | **Resolve issues idenfied by QA** |  | 28d? | 2013-07-30 A | 2013-09-05 A |  | 100% |  |  |  |  | 232h | 232h |
| 44 | 1.1.22.11.8.1 | Fix issues 2681, 2684 |  | 26d | 2013-07-30 A | 2013-09-03 A |  | 100% |  |  | start no earlier than 2013-07-30 | Winston | 208h | 208h |
| 45 | 1.1.22.11.8.2 | Retest issues |  | 2d | 2013-09-04 A | 2013-09-05 A | 44 | 100% |  |  |  | Marina | 16h | 16h |
| 46 | 1.1.22.11.8.3 | Re-run Section 508 scan |  | 1d? | 2013-09-04 A | 2013-09-04 A | 44 | 100% |  |  |  | Mike | 8h | 8h |
| 47 | 1.1.22.11.9 | Run security appscan |  | 5d | 2013-09-06 A | 2013-09-12 A | 45 | 100% |  |  |  | Systems | 40h | 40h |
| 48 | 1.1.22.11.10 | Update test report |  | 3d | 2013-09-13 A | 2013-09-17 A | 39, 40, 47, 41, 42 | 100% |  |  |  | Marina | 24h | 24h |
| 49 | 1.1.22.12 | Request approval to deploy to STAGE and PROD | milestone | 0d | 2013-09-17 A | 2013-09-17 A | 48 | 100% |  |  |  | Marina |  |  |
| 50 | 1.1.22.13 | Test Results Review and Reporting |  | 1d | 2013-09-18 A | 2013-09-18 A | 49 | 100% |  |  |  | QA* | 8h | 8h |
| 51 | 1.1.22.14 | Approval to deploy to STAGE and PROD | milestone | 0d | 2013-09-18 A | 2013-09-18 A | 50 | 100% |  |  |  | QA* |  |  |
| 52 | 1.1.22.15 | Create release artifacts |  | 1d | 2013-09-23 A | 2013-09-23 A | 51 | 100% |  |  |  | Mike; Winston | 16h | 16h |
| 53 | 1.1.23 | **STAGE Tier** |  | 7d? | 2013-09-18 A | 2013-09-27 |  | 86% | 1d? | 89d |  |  | 64h | 48h |
| 54 | 1.1.23.1 | Request deployment to STAGE | milestone | 0d | 2013-09-18 A | 2013-09-18 A | 51 | 100% |  |  |  | Sichen |  |  |
| 55 | 1.1.23.2 | Deploy to STAGE |  | 1d | 2013-09-19 A | 2013-09-19 A | 54 | 100% |  |  |  | Systems* | 8h | 8h |
| 56 | 1.1.23.3 | Test run of restoring caArray from tape backup |  | 1d? | 2013-09-20 | 2013-09-20 | 55 |  |  | 76d |  | Systems; Marina | 16h |  |
| 57 | 1.1.23.4 | API Testing |  | 2d | 2013-09-26 A | 2013-09-27 A | 55 | 100% |  |  |  | Ye | 16h | 16h |
| 58 | 1.1.23.5 | Smoke Testing | milestone | 0d | 2013-09-19 A | 2013-09-19 A | 55 | 100% |  |  |  | Marina |  |  |
| 59 | 1.1.23.6 | Notify Columbia that caArray 2.5.1 is on STAGE | milestone | 0d | 2013-09-19 A | 2013-09-19 A | 55 | 100% |  |  |  | Mike; Juli |  |  |
| 60 | 1.1.23.7 | Create QA Test Summary Report |  | 2d | 2013-09-20 A | 2013-09-23 A | 59 | 100% |  |  |  | Marina | 16h | 16h |
| 61 | 1.1.23.8 | Test Results Review and Reporting |  | 1d | 2013-09-24 A | 2013-09-24 A | 60 | 100% |  |  |  | QA* | 8h | 8h |

| ID | WBS | Task | Type | Duration | Start | Finish | Predecessors | Complete | Constraint | Resources | Work | Actual work |
| --- | --- | --- | --- | --- | --- | --- | --- | --- | --- | --- | --- | --- |
| 62 | 1.1.24 | **PRODUCTION** |  | 4d | 2013-09-24 A | 2013-09-30 A |  | 100% |  |  | 32h | 32h |
| 63 | 1.1.24.1 | Request deployment to PRODUCTION | milestone | 0d | 2013-09-24 A | 2013-09-24 A | 61, 51 | 100% |  | GQR |  |  |
| 64 | 1.1.24.2 | Deploy to PRODUCTION |  | 2d | 2013-09-25 A | 2013-09-26 A | 63 | 100% |  | Systems* | 16h | 16h |
| 65 | 1.1.24.3 | Update product landing page |  | 0.5d | 2013-09-27 A | 2013-09-27 A | 64 | 100% |  |  |  |  |
| 66 | 1.1.24.4 | QA smoke tests PRODUCTION |  | 2d | 2013-09-27 A | 2013-09-30 A | 64 | 100% |  | QA* | 16h | 16h |
| 67 | 1.1.25 | MILESTONE: RELEASE 2.5.1 | milestone | 0d | 2013-09-30 A | 2013-09-30 A | 62 | 100% | finish no earlier than 2013-09-30 |  |  |  |
| 68 | 1.2 | **caArray 2.5.2** |  | 174d | 2013-04-09 A | 2013-12-11 A |  | 100% |  |  | 2952h | 2952h |
| 69 | 1.2.1 | **Development** |  | 149d | 2013-04-09 A | 2013-11-01 A |  | 100% |  |  | 2904h | 2904h |
| 70 | 1.2.1.1 | **Iteration 83** |  | 10d | 2013-04-09 A | 2013-04-22 A |  | 100% |  |  | 160h | 160h |
| 71 | 1.2.1.1.1 | ARRAY-2645: Error Adding GenePix Array Design |  | 10d | 2013-04-09 A | 2013-04-22 A |  | 100% | start no earlier than 2013-04-09 | Winston | 80h | 80h |
| 72 | 1.2.1.1.2 | ARRAY-2610: Memory Usage High While Importing on the Curation Tier |  | 10d | 2013-04-09 A | 2013-04-22 A |  | 100% | start no earlier than 2013-04-09 | Winston | 80h | 80h |
| 73 | 1.2.1.2 | **Iteration 84** |  | 10d | 2013-04-23 A | 2013-05-06 A | 70 | 100% |  |  | 80h | 80h |
| 74 | 1.2.1.2.1 | ARRAY-2650: When install locally (2.5.1_M13 (RC1)) under Linux command line, - jBoss didn't start automatically |  | 10d | 2013-04-23 A | 2013-05-06 A |  | 100% |  | Winston | 80h | 80h |
| 75 | 1.2.1.3 | **Iteration 87** |  | 10d | 2013-06-04 A | 2013-06-17 A |  | 100% |  |  | 320h | 320h |
| 76 | 1.2.1.3.1 | ARRAY-2660: Assess the FISMA POAM tasks |  | 10d | 2013-06-04 A | 2013-06-17 A |  | 100% | start no earlier than 2013-06-04 | Winston | 80h | 80h |
| 77 | 1.2.1.3.2 | ARRAY-2657: Investigate CSM/UPT upgrade |  | 10d | 2013-06-04 A | 2013-06-17 A |  | 100% | start no earlier than 2013-06-04 | Winston | 80h | 80h |
| 78 | 1.2.1.3.3 | ARRAY-2622: Upgrade from 2.5.0 to 2.5.0.1 produces subtasks failed to find matches error |  | 10d | 2013-06-04 A | 2013-06-17 A |  | 100% | start no earlier than 2013-06-04 | Winston | 80h | 80h |
| 79 | 1.2.1.3.4 | ARRAY-2624: Broken link - Manage users |  | 10d | 2013-06-04 A | 2013-06-17 A |  | 100% | start no earlier than 2013-06-04 | Winston | 80h | 80h |
| 80 | 1.2.1.4 | **Iteration 88** |  | 10d | 2013-06-18 A | 2013-07-01 A | 75 | 100% |  |  | 400h | 400h |
| 81 | 1.2.1.4.1 | ARRAY-2579: Installation Guide: Add note on MySQL upgrade |  | 10d | 2013-06-18 A | 2013-07-01 A |  | 100% |  | Winston | 80h | 80h |
| 82 | 1.2.1.4.2 | ARRAY-2663: Review full POAM and get the dialog started with Craig |  | 10d | 2013-06-18 A | 2013-07-01 A |  | 100% |  | Mike | 80h | 80h |
| 83 | 1.2.1.4.3 | ARRAY-2661: opensymphony.com no longer available, causes forms to break |  | 10d | 2013-06-18 A | 2013-07-01 A |  | 100% |  | Winston | 80h | 80h |
| 84 | 1.2.1.4.4 | ARRAY-2619: Move the caArray Release Notes to the Confluence Wiki |  | 10d | 2013-06-18 A | 2013-07-01 A |  | 100% |  | Winston; Mike | 160h | 160h |
| 85 | 1.2.1.5 | **Iteration 89** |  | 10d | 2013-07-02 A | 2013-07-15 A | 80 | 100% |  |  | 480h | 480h |
| 86 | 1.2.1.5.1 | ARRAY-2009: Contents of audit records need to aligned with NIH policy |  | 10d | 2013-07-02 A | 2013-07-15 A |  | 100% |  | Winston | 80h | 80h |
| 87 | 1.2.1.5.2 | ARRAY-2014: POAM: Confirm caArray application does not use anything in the following directory |  | 10d | 2013-07-02 A | 2013-07-15 A |  | 100% |  | Winston | 80h | 80h |
| 88 | 1.2.1.5.3 | ARRAY-2666: Audit changes to experiment metadata and description |  | 10d | 2013-07-02 A | 2013-07-15 A |  | 100% |  | Winston | 80h | 80h |
| 89 | 1.2.1.5.4 | ARRAY-2669: Audit changes to experiment biomaterials |  | 10d | 2013-07-02 A | 2013-07-15 A |  | 100% |  | Winston | 80h | 80h |
| 90 | 1.2.1.5.5 | ARRAY-2667: Confirm that the audit functionality includes all of the required fields |  | 10d | 2013-07-02 A | 2013-07-15 A |  | 100% |  | Winston | 80h | 80h |
| 91 | 1.2.1.5.6 | ARRAY-2665: Review/confirm 2648, 2652, and 2659 |  | 10d | 2013-07-02 A | 2013-07-15 A |  | 100% |  | Winston | 80h | 80h |

| ID | WBS | Task | Type | Duration | Start | Finish | Predecessors | Complete | Constraint | Resources | Work | Actual work |
| --- | --- | --- | --- | --- | --- | --- | --- | --- | --- | --- | --- | --- |
| 92 | 1.2.1.6 | **Iteration 90** |  | 10d | 2013-07-16 A | 2013-07-29 A | 85 | 100% |  |  | 400h | 400h |
| 93 | 1.2.1.6.1 | ARRAY-2678: Upgrade Struts to 2.3.15.1 |  | 10d | 2013-07-16 A | 2013-07-29 A |  | 100% |  | Winston | 80h | 80h |
| 94 | 1.2.1.6.2 | ARRAY-2670: Changing only an experiment's assay type or array design does not get audited |  | 10d | 2013-07-16 A | 2013-07-29 A |  | 100% |  | Winston | 80h | 80h |
| 95 | 1.2.1.6.3 | ARRAY-2674: Make it easy for NCI to do a monthly review of audit log entries |  | 10d | 2013-07-16 A | 2013-07-29 A |  | 100% |  | Winston | 80h | 80h |
| 96 | 1.2.1.6.4 | ARRAY-2679: ActionContextCleanUp deprecated |  | 10d | 2013-07-16 A | 2013-07-29 A |  | 100% |  | Winston | 80h | 80h |
| 97 | 1.2.1.6.5 | ARRAY-2675: Add time to the audit log details in the interface |  | 10d | 2013-07-16 A | 2013-07-29 A |  | 100% |  | Winston | 80h | 80h |
| 98 | 1.2.1.7 | **Iteration 94** |  | 10d | 2013-09-11 A | 2013-09-24 A |  | 100% |  |  | 80h | 80h |
| 99 | 1.2.1.7.1 | ARRAY-2683: Customizable monthly Audit Log SQL query |  | 10d | 2013-09-11 A | 2013-09-24 A |  | 100% | start no earlier than 2013-08-14 | Winston | 80h | 80h |
| 100 | 1.2.1.8 | **Iteration 95** |  | 13d | 2013-09-25 A | 2013-10-11 A | 98 | 100% |  |  | 416h | 416h |
| 101 | 1.2.1.8.1 | ARRAY-2010: Experiment creation and deletion need to be an audited event |  | 13d | 2013-09-25 A | 2013-10-11 A |  | 100% |  | Winston | 104h | 104h |
| 102 | 1.2.1.8.2 | ARRAY-2668: Audit changes to experiment files |  | 13d | 2013-09-25 A | 2013-10-11 A |  | 100% |  | Winston | 104h | 104h |
| 103 | 1.2.1.8.3 | ARRAY-2671: Audit changes to array designs |  | 13d | 2013-09-25 A | 2013-10-11 A |  | 100% |  | Winston | 104h | 104h |
| 104 | 1.2.1.8.4 | ARRAY-2672: Audit changes to terms |  | 13d | 2013-09-25 A | 2013-10-11 A |  | 100% |  | Winston | 104h | 104h |
| 105 | 1.2.1.9 | **Iteration 96** |  | 15d | 2013-10-14 A | 2013-11-01 A | 100 | 100% |  |  | 568h | 568h |
| 106 | 1.2.1.9.1 | ARRAY-2008: Add a warning banner to caArray |  | 14d | 2013-10-14 A | 2013-10-31 A |  | 100% |  | Winston | 112h | 112h |
| 107 | 1.2.1.9.2 | ARRAY-2018: Add warning to experiment owner when an experiment is made public |  | 14d | 2013-10-14 A | 2013-10-31 A |  | 100% |  | Winston | 112h | 112h |
| 108 | 1.2.1.9.3 | ARRAY-2673: Audit account logon events |  | 14d | 2013-10-14 A | 2013-10-31 A |  | 100% |  | Winston | 112h | 112h |
| 109 | 1.2.1.9.4 | ARRAY-2688: Update page footer |  | 15d | 2013-10-14 A | 2013-11-01 A |  | 100% |  | Winston | 120h | 120h |
| 110 | 1.2.1.9.5 | ARRAY-2689: Fix Audit Log junit tests |  | 14d | 2013-10-14 A | 2013-10-31 A |  | 100% |  | Winston | 112h | 112h |
| 111 | 1.2.2 | Cut release candidate | milestone | 0d | 2013-11-01 A | 2013-11-01 A | 105 | 100% |  | Winston |  |  |
| 112 | 1.2.3 | Create test plan |  | 3d | 2013-11-04 A | 2013-11-06 A | 111 | 100% |  | Marina | 24h | 24h |
| 113 | 1.2.4 | Request approval to deploy to QA | milestone | 0d | 2013-11-06 A | 2013-11-06 A | 112, 111 | 100% |  | Mike |  |  |
| 114 | 1.2.5 | DEV test results and QA Test Plan review |  | 3d | 2013-11-07 A | 2013-11-11 A | 113 | 100% |  | QA* | 24h | 24h |
| 115 | 1.2.6 | Approval to deploy to QA | milestone | 0d | 2013-12-11 A | 2013-12-11 A | 114 | 100% | start no earlier than 2013-12-04 | GQR |  |  |

| ID | WBS | Task | Type | Duration | Start | Finish | Predecessors | Complete | Remaining | Total slack | Constraint | Resources | Work | Actual work |
| --- | --- | --- | --- | --- | --- | --- | --- | --- | --- | --- | --- | --- | --- | --- |
| 116 | 1.3 | **QA Tier** |  | 17d? | 2013-12-11 A | 2014-01-06 |  | 51% | 8.26d? | 22d |  |  | 288h | 179.2h |
| 117 | 1.3.1 | Deploy to QA tier |  | 1d? | 2013-12-11 A | 2013-12-11 A | 115 | 100% |  |  |  | Systems* | 8h | 8h |
| 118 | 1.3.2 | **Regression Testing on QA tier** |  | 8d | 2013-12-12 A | 2013-12-23 A |  | 100% |  |  |  | Marina | 128h | 128h |
| 119 | 1.3.2.1 | Automated testing |  | 4d | 2013-12-12 A | 2013-12-17 A | 117 | 100% |  |  |  | Marina | 32h | 32h |
| 120 | 1.3.2.2 | Manual testing |  | 4d | 2013-12-18 A | 2013-12-23 A | 119 | 100% |  |  |  | Marina | 32h | 32h |
| 121 | 1.3.3 | Installer Testing |  | 4d | 2013-12-12 A | 2013-12-17 | 117 | 90% | 0.4d | 4d |  | Marina | 32h | 28.8h |
| 122 | 1.3.4 | Section 508 testing on QA tier |  | 2d | 2013-12-17 A | 2013-12-18 | 117 | 90% | 0.2d | 3d | start no earlier than 2013-12-17 | Marina | 16h | 14.4h |
| 123 | 1.3.5 | Appscan on QA tier |  | 5d | 2013-12-24 | 2013-12-31 | 120, 117 |  |  | 25d |  | Systems* | 40h |  |
| 124 | 1.3.6 | Create QA Test Summary Report |  | 3d | 2013-12-24 | 2013-12-27 | 118, 121, 122 |  |  | 0d |  | Marina | 24h |  |
| 125 | 1.3.7 | Request approval to deploy to STAGE | milestone | 0d | 2013-12-27 | 2013-12-27 | 124, 123, 118, 121, 122 |  |  | 0d |  | Marina |  |  |
| 126 | 1.3.8 | QA Test Results Review |  | 3d | 2013-12-30 | 2014-01-02 | 125 |  |  | 0d |  | QA* | 24h |  |
| 127 | 1.3.9 | Approval to deploy to STAGE | milestone | 0d | 2014-01-02 | 2014-01-02 | 126 |  |  | 0d |  | QA* |  |  |
| 128 | 1.3.10 | Create release artifacts |  | 2d | 2014-01-03 | 2014-01-06 | 127 |  |  | 22d |  | Winston | 16h |  |
| 129 | 1.4 | **STAGE Tier** |  | 19d | 2014-01-02 | 2014-01-29 |  |  |  | 0d |  |  | 184h |  |
| 130 | 1.4.1 | Request deployment to STAGE | milestone | 0d | 2014-01-02 | 2014-01-02 | 127 |  |  | 0d |  | JJ |  |  |
| 131 | 1.4.2 | Deploy to STAGE |  | 3d | 2014-01-03 | 2014-01-07 | 130 |  |  | 0d |  | Systems* | 24h |  |
| 132 | 1.4.3 | Automated regression testing |  | 4d | 2014-01-08 | 2014-01-13 | 131 |  |  | 6d |  | Marina | 32h |  |
| 133 | 1.4.4 | API testing |  | 2d | 2014-01-08 | 2014-01-09 | 131 |  |  | 8d |  |  |  |  |
| 134 | 1.4.5 | Request security appscan | milestone | 0d | 2014-01-07 | 2014-01-07 | 131 |  |  | 0d |  | Marina |  |  |
| 135 | 1.4.6 | Run security appscan |  | 10d | 2014-01-08 | 2014-01-21 | 134 |  |  | 0d |  | Systems* | 80h |  |
| 136 | 1.4.7 | Create QA Test Summary Report |  | 3d | 2014-01-22 | 2014-01-24 | 135, 132, 133 |  |  | 0d |  | Marina | 24h |  |
| 137 | 1.4.8 | Request approval to deploy to PROD | milestone | 0d | 2014-01-24 | 2014-01-24 | 136 |  |  | 0d |  | Marina |  |  |
| 138 | 1.4.9 | Test Results Review and Reporting |  | 3d | 2014-01-27 | 2014-01-29 | 137 |  |  | 0d |  | QA* | 24h |  |
| 139 | 1.4.10 | Approval to deploy to PROD | milestone | 0d | 2014-01-29 | 2014-01-29 | 138 |  |  | 0d |  | GQR |  |  |

| ID | WBS | Task | Type | Duration | Start | Finish | Predecessors | Total slack | Constraint | Resources | Work |
| --- | --- | --- | --- | --- | --- | --- | --- | --- | --- | --- | --- |
| 140 | 1.5 | **PRODUCTION** |  | 5d? | 2014-01-30 | 2014-02-05 |  | 0d |  |  | 40h |
| 141 | 1.5.1 | Request deployment to PRODUCTION |  | 1d? | 2014-01-30 | 2014-01-30 | 139 | 0d |  | GQR | 8h |
| 142 | 1.5.2 | Deploy to PRODUCTION |  | 3d | 2014-01-31 | 2014-02-04 | 141 | 0d |  | Systems* | 24h |
| 143 | 1.5.3 | Update product landing page |  | 0.5d | 2014-02-05 | 2014-02-05 | 142 | 0.5d |  |  |  |
| 144 | 1.5.4 | QA smoke tests PRODUCTION |  | 1d | 2014-02-05 | 2014-02-05 | 142 | 0d |  | QA* | 8h |
| 145 | 1.6 | MILESTONE: RELEASE 2.5.2 | milestone | 0d | 2014-02-05 | 2014-02-05 | 140 | 0d | start no earlier than 2012-01-09 |  |  |
| 146 | 1.7 | User Support |  | 256d | 2012-12-07 | 2013-12-03 | 3 | 26d |  | Winston; Rashmi; Mike | 6144h |
