# caarray_schedule_2_1_1

Schedule from MS Project, 2008-08-01 to 2008-10-22.
Sony Electronics, Inc.

## Calendars

- Standard: Mon-Fri 08:00-12:00, 13:00-17:00; Sat-Sun off.

## Schedule

| ID | WBS | Task | Type | Duration | Start | Finish | Predecessors | Total slack | Free slack | Constraint |
| --- | --- | --- | --- | --- | --- | --- | --- | --- | --- | --- |
| 1 | 1 | Milestone: Begin 2.1.1 Release | milestone | 0d | 2008-08-01 | 2008-08-01 |  | 5d | 0d |  |
| 2 | 2 | **Construction RC** |  | 31d? | 2008-08-01 | 2008-09-12 |  | 15.5d |  |  |
| 3 | 2.1 | Milestone: Begin RC Construction | milestone | 0d | 2008-08-01 | 2008-08-01 | 1 | 5d | 0d |  |
| 4 | 2.2 | Project Management |  | 1d? | 2008-08-01 | 2008-08-01 | 3 | 20d |  |  |
| 5 | 2.3 | Requirements Management |  | 1d? | 2008-08-01 | 2008-08-01 | 3 | 20d |  |  |
| 6 | 2.4 | **Implementation** |  | 21d? | 2008-08-01 | 2008-08-30 |  | 15.5d |  |  |
| 7 | 2.4.1 | Milestone: Begin Implementation of RC | milestone | 0d | 2008-08-01 | 2008-08-01 | 3 | 5d | 0d |  |
| 8 | 2.4.2 | Develop RC release |  | 21d? | 2008-08-01 | 2008-08-30 | 7 | 15.5d | 0d | finish no earlier than 2008-08-30 |
| 9 | 2.4.3 | Verify Defects on DEV |  | 1d? | 2008-08-28 | 2008-08-28 | 3 | 16.5d | 1d | start no earlier than 2008-08-28 |
| 10 | 2.4.4 | Milestone: Deploy RC to QA | milestone | 0d | 2008-08-30 | 2008-08-30 | 8, 9 | 5d | 0d |  |
| 11 | 2.5 | **Test** |  | 10d | 2008-08-30 | 2008-09-12 |  | 28d |  |  |
| 12 | 2.5.1 | Milestone: Begin RC1 Testing | milestone | 0d | 2008-08-30 | 2008-08-30 | 10 | 5d | 0d |  |
| 13 | 2.5.2 | Verify Defects on QA |  | 4d | 2008-09-01 | 2008-09-04 | 12 | 1d |  |  |
| 14 | 2.5.3 | Regression Test |  | 5d | 2008-09-01 | 2008-09-05 | 12 | 5d | 0d |  |
| 15 | 2.5.4 | Deploy to Stage |  | 1d | 2008-09-08 | 2008-09-08 | 13, 14 | 5d | 0d |  |
| 16 | 2.5.5 | Stage Test |  | 4d | 2008-09-09 | 2008-09-12 | 15 | 5d | 0d |  |
| 17 | 2.5.6 | Installer Test |  | 4d | 2008-09-08 | 2008-09-11 | 13, 14 | 1d |  |  |
| 18 | 2.5.7 | Security Scan |  | 4d | 2008-09-09 | 2008-09-12 | 15 | 5d | 0d |  |
| 19 | 2.5.8 | Milestone: RC testing complete | milestone | 0d | 2008-09-12 | 2008-09-12 | 16, 17, 18 | 28d | 0d |  |
| 20 | 2.6 | Milestone: RC Completed | milestone | 0d | 2008-09-12 | 2008-09-12 | 19 | 5d |  |  |
| 21 | 3 | **Construction RC2** |  | 38d? | 2008-08-01 | 2008-09-23 |  | 21d |  |  |
| 22 | 3.1 | Milestone: Begin RC2 Construction | milestone | 0d | 2008-08-30 | 2008-08-30 | 10 | 38d |  |  |
| 23 | 3.2 | Project Management |  | 1d? | 2008-08-01 | 2008-08-01 |  | 58d |  |  |
| 24 | 3.3 | **Implementation** |  | 8d | 2008-08-30 | 2008-09-10 |  | 0d |  |  |
| 25 | 3.3.1 | Milestone: Begin RC2 Implementation | milestone | 0d | 2008-08-30 | 2008-08-30 | 10 | 15d |  |  |
| 26 | 3.3.2 | Address RC bugs |  | 7d | 2008-09-01 | 2008-09-09 |  | 0d |  | start no earlier than 2008-09-01 |
| 27 | 3.3.3 | Verify Defects on DEV |  | 1d | 2008-09-10 | 2008-09-10 | 26 | 0d |  |  |
| 28 | 3.3.4 | Milestone: Deploy RC2 to QA | milestone | 0d | 2008-09-10 | 2008-09-10 | 27 | 0d |  |  |

| ID | WBS | Task | Type | Duration | Start | Finish | Predecessors | Total slack | Free slack |
| --- | --- | --- | --- | --- | --- | --- | --- | --- | --- |
| 29 | 3.4 | **Test** |  | 9d | 2008-09-10 | 2008-09-23 |  | 11.5d |  |
| 30 | 3.4.1 | Milestone: Begin RC2 Testing | milestone | 0d | 2008-09-10 | 2008-09-10 | 28 | 11.5d | 0d |
| 31 | 3.4.2 | Verify Defects on QA |  | 4d | 2008-09-11 | 2008-09-16 | 30 | 1d | 0d |
| 32 | 3.4.3 | Regression Test |  | 5d | 2008-09-11 | 2008-09-17 | 30 | 1d | 0d |
| 33 | 3.4.4 | Deploy to Stage |  | 1d | 2008-09-17 | 2008-09-17 | 31 | 1d | 0d |
| 34 | 3.4.5 | Stage Test |  | 4d | 2008-09-18 | 2008-09-23 | 33 | 1d | 0d |
| 35 | 3.4.6 | Installer Testing |  | 3d | 2008-09-18 | 2008-09-22 | 31, 32 | 1d |  |
| 36 | 3.4.7 | Installer Testing - kc |  | 4d | 2008-09-18 | 2008-09-23 | 31, 32 | 1d | 0d |
| 37 | 3.4.8 | Security Scan |  | 4d | 2008-09-18 | 2008-09-23 | 33 | 1d | 0d |
| 38 | 3.4.9 | Deployment Test |  | 2d | 2008-09-18 | 2008-09-19 | 33 | 2d |  |
| 39 | 3.4.10 | Milestone: RC2 testing completed | milestone | 0d | 2008-09-23 | 2008-09-23 | 34, 35, 36, 37, 38 | 21d | 0d |
| 40 | 3.5 | Milestone: RC2 Completed | milestone | 0d | 2008-09-23 | 2008-09-23 | 39 | 21d |  |
| 41 | 4 | **Construction RC3** |  | 17d? | 2008-09-10 | 2008-10-03 |  | 0d |  |
| 42 | 4.1 | Milestone: Begin RC3 Construction | milestone | 0d | 2008-09-10 | 2008-09-10 | 28 | 0d |  |
| 43 | 4.2 | Project Management |  | 1d? | 2008-09-11 | 2008-09-11 | 42 | 8d |  |
| 44 | 4.3 | **Implementation** |  | 10d | 2008-09-10 | 2008-09-24 |  | 0d |  |
| 45 | 4.3.1 | Milestone: Begin RC3 Implementation | milestone | 0d | 2008-09-10 | 2008-09-10 | 42 | 0d |  |
| 46 | 4.3.2 | Address RC3 bugs |  | 9d | 2008-09-11 | 2008-09-23 | 45 | 0d |  |
| 47 | 4.3.3 | Verify Defects on DEV |  | 1d | 2008-09-24 | 2008-09-24 | 46 | 0d |  |
| 48 | 4.3.4 | Milestone: Deploy RC3 to QA | milestone | 0d | 2008-09-24 | 2008-09-24 | 47 | 0d |  |
| 49 | 4.4 | **Test** |  | 7d | 2008-09-24 | 2008-10-03 |  | 0d |  |
| 50 | 4.4.1 | Milestone: Begin RC3 Testing | milestone | 0d | 2008-09-24 | 2008-09-24 | 48 | 0d |  |
| 51 | 4.4.2 | Verify Defects on QA |  | 2d | 2008-09-25 | 2008-09-26 | 50 | 1d | 0d |
| 52 | 4.4.3 | Regression Test |  | 3d | 2008-09-25 | 2008-09-29 | 50 | 0d |  |
| 53 | 4.4.4 | Deploy to Stage |  | 1d | 2008-09-29 | 2008-09-29 | 51 | 1d | 0d |
| 54 | 4.4.5 | Stage Test |  | 4d | 2008-09-30 | 2008-10-03 | 53 | 1d | 0d |
| 55 | 4.4.6 | Installer Testing |  | 3d | 2008-09-30 | 2008-10-02 | 51, 52 | 1d |  |
| 56 | 4.4.7 | Installer Testing - kc |  | 3d | 2008-09-30 | 2008-10-02 | 51, 52 | 1d |  |
| 57 | 4.4.8 | LSD compliance testing |  | 3d | 2008-09-30 | 2008-10-02 | 51, 52 | 1d |  |
| 58 | 4.4.9 | Deployment Test |  | 2d | 2008-09-25 | 2008-09-26 | 48 | 5d |  |
| 59 | 4.4.10 | Milestone: RC3 testing completed | milestone | 0d | 2008-10-03 | 2008-10-03 | 54, 55, 56, 57, 58 | 1d | 0d |
| 60 | 4.5 | Milestone: RC3 Completed | milestone | 0d | 2008-10-03 | 2008-10-03 | 59 | 1d |  |

| ID | WBS | Task | Type | Duration | Start | Finish | Predecessors | Total slack | Free slack | Constraint |
| --- | --- | --- | --- | --- | --- | --- | --- | --- | --- | --- |
| 61 | 5 | **Construction RC4 - GA** |  | 13.5d | 2008-09-29 | 2008-10-17 |  | 0d |  |  |
| 62 | 5.1 | Milestone:Begin RC4 Construction | milestone | 0d | 2008-09-29 | 2008-09-29 | 51, 52 | 0d |  |  |
| 63 | 5.2 | **Implementation** |  | 5.5d | 2008-09-29 | 2008-10-07 |  | 0d |  |  |
| 64 | 5.2.1 | Milestone: Begin RC4 Implementation | milestone | 0d | 2008-09-29 | 2008-09-29 | 62 | 0d |  |  |
| 65 | 5.2.2 | Address RC4 bugs |  | 5d | 2008-09-30 | 2008-10-06 | 64 | 0d |  |  |
| 66 | 5.2.3 | Verify Defects on DEV |  | 0.5d | 2008-10-07 | 2008-10-07 | 65 | 0d |  |  |
| 67 | 5.2.4 | Milestone: Deploy RC4 to QA | milestone | 0d | 2008-10-07 | 2008-10-07 | 66 | 0d |  |  |
| 68 | 5.3 | **Test** |  | 8d | 2008-10-07 | 2008-10-17 |  | 0d |  |  |
| 69 | 5.3.1 | Milestone: Begin RC4 Testing | milestone | 0d | 2008-10-07 | 2008-10-07 | 67 | 0d |  |  |
| 70 | 5.3.2 | Verify Defects on QA |  | 2d | 2008-10-07 | 2008-10-09 | 69 | 1d | 0d |  |
| 71 | 5.3.3 | Regression Test |  | 3d | 2008-10-07 | 2008-10-10 | 69 | 0d |  |  |
| 72 | 5.3.4 | Deploy to Stage |  | 0.5d | 2008-10-09 | 2008-10-09 | 70 | 0.5d | 0d |  |
| 73 | 5.3.5 | Stage Test |  | 3d | 2008-10-10 | 2008-10-14 | 72 | 1.5d | 0.5d |  |
| 74 | 5.3.6 | Installer Testing |  | 3d | 2008-10-10 | 2008-10-15 | 70, 71 | 1d | 0d |  |
| 75 | 5.3.7 | Installer Testing - kc |  | 3d | 2008-10-10 | 2008-10-15 | 70, 71 | 1d | 0d |  |
| 76 | 5.3.8 | LSD compliance testing |  | 3d | 2008-10-10 | 2008-10-15 | 70, 71 | 1d | 0d |  |
| 77 | 5.3.9 | Security scan |  | 4d | 2008-10-10 | 2008-10-15 | 72 | 1.5d |  |  |
| 78 | 5.3.10 | Milestone: RC4 Testing completed | milestone | 0d | 2008-10-17 | 2008-10-17 | 73, 74, 75, 80 | 0d |  | start no earlier than 2008-10-16 |
| 79 | 5.4 | Milestone: RC4 Completed | milestone | 0d | 2008-10-17 | 2008-10-17 | 78 | 3.5d |  |  |
| 80 | 6 | **Configuration and Change Management** |  | 34.5d | 2008-08-30 | 2008-10-17 |  | 0d |  |  |
| 81 | 6.1 | Milestone: Begin Configuration and Change Management | milestone | 0d | 2008-08-30 | 2008-08-30 | 10 | 34d |  |  |
| 82 | 6.2 | **Documentation** |  | 31d | 2008-08-30 | 2008-10-13 | 81 | 3.5d |  |  |
| 83 | 6.2.1 | Milestone: Begin Documentation | milestone | 0d | 2008-08-30 | 2008-08-30 | 81 | 15.5d | 0d |  |
| 84 | 6.2.2 | **Update User Guide** |  | 18d | 2008-08-30 | 2008-09-24 |  | 15.5d |  |  |
| 85 | 6.2.2.1 | Milestone: Begin User Guide Update | milestone | 0d | 2008-08-30 | 2008-08-30 | 83 | 15.5d | 0d |  |
| 86 | 6.2.2.2 | GUI change summary to Jill |  | 5d | 2008-09-01 | 2008-09-05 | 85 | 15.5d | 0d |  |
| 87 | 6.2.2.3 | Update User Guide |  | 5d | 2008-09-08 | 2008-09-12 | 86 | 15.5d | 0d |  |
| 88 | 6.2.2.4 | Review User Guide |  | 5d | 2008-09-15 | 2008-09-19 | 87 | 15.5d | 0d |  |
| 89 | 6.2.2.5 | Incorporate feedback to User Guide |  | 3d | 2008-09-22 | 2008-09-24 | 88 | 15.5d | 0d |  |
| 90 | 6.2.2.6 | Milestone: User Guide Updated for 2.1.1 | milestone | 0d | 2008-09-24 | 2008-09-24 | 89 | 15.5d | 13d |  |

| ID | WBS | Task | Type | Duration | Start | Finish | Predecessors | Total slack | Free slack |
| --- | --- | --- | --- | --- | --- | --- | --- | --- | --- |
| 91 | 6.2.3 | **Update Install Guide** |  | 14d | 2008-09-23 | 2008-10-13 |  | 3.5d |  |
| 92 | 6.2.3.1 | Milestone: Begin Install Guide Update | milestone | 0d | 2008-09-23 | 2008-09-23 | 35, 36 | 11.5d | 0d |
| 93 | 6.2.3.2 | Send install guide update to Jill: RC2 |  | 3d | 2008-09-24 | 2008-09-26 | 92 | 11.5d | 0d |
| 94 | 6.2.3.3 | Update Install Guide: RC3 |  | 3d | 2008-09-29 | 2008-10-01 | 93 | 11.5d |  |
| 95 | 6.2.3.4 | Send install guide update to Jill: RC3 |  | 3d | 2008-10-03 | 2008-10-07 | 55, 56 | 2.5d | 0d |
| 96 | 6.2.3.5 | Update Install Guide: RC3 |  | 3d | 2008-10-08 | 2008-10-10 | 95 | 2.5d | 0d |
| 97 | 6.2.3.6 | Review install guide |  | 1d | 2008-10-13 | 2008-10-13 | 96 | 2.5d | 0d |
| 98 | 6.2.3.7 | Milestone: Complete Install Guide | milestone | 0d | 2008-10-13 | 2008-10-13 | 97 | 2.5d | 0d |
| 99 | 6.2.4 | Milestone: Complete Documentation | milestone | 0d | 2008-10-13 | 2008-10-13 | 90, 98 | 2.5d | 0d |
| 100 | 6.3 | **Upload release artifacts** |  | 5d | 2008-10-10 | 2008-10-17 |  | 0d |  |
| 101 | 6.3.1 | Milestone: Begin preparation of release artifacts | milestone | 0d | 2008-10-10 | 2008-10-10 | 71 | 3d | 0d |
| 102 | 6.3.2 | Prepare 2.1.1 Release Note |  | 2d | 2008-10-10 | 2008-10-14 | 101 | 3d |  |
| 103 | 6.3.3 | Prepare 2.1.1 client.jar |  | 1d | 2008-10-15 | 2008-10-16 | 73, 74, 75 | 1d |  |
| 104 | 6.3.4 | Prepare 2.1.1 javadoc |  | 1d | 2008-10-15 | 2008-10-16 | 73, 74, 75 | 1d |  |
| 105 | 6.3.5 | Upload installer |  | 1d | 2008-10-15 | 2008-10-16 | 74, 75 | 1d |  |
| 106 | 6.3.6 | Upload documentation |  | 1d | 2008-10-14 | 2008-10-14 | 99 | 2.5d |  |
| 107 | 6.3.7 | Update Download Center |  | 5d | 2008-10-10 | 2008-10-17 | 70, 71 | 0d |  |
| 108 | 6.3.8 | Update Tools Page |  | 2d | 2008-10-15 | 2008-10-16 | 73 | 0.5d |  |
| 109 | 6.3.9 | Update LSD Files Tab |  | 1d | 2008-10-15 | 2008-10-16 | 76 | 1d |  |
| 110 | 6.3.10 | Update Landing Site |  | 2d | 2008-10-15 | 2008-10-16 | 73 | 0.5d |  |
| 111 | 6.3.11 | Milestone: Complete release artifact preparation | milestone | 0d | 2008-10-17 | 2008-10-17 | 102, 103, 104, 105, 106, 107, 108, 109, 110 | 0d |  |
| 112 | 6.4 | Milestone: Complete Configuration Management | milestone | 0d | 2008-10-17 | 2008-10-17 | 99, 111 | 0d |  |
| 113 | 7 | **Environment** |  | 3.5d | 2008-10-17 | 2008-10-22 |  | 0d |  |
| 114 | 7.1 | Milestone: Begin deployment to PROD activities | milestone | 0d | 2008-10-17 | 2008-10-17 | 78 | 0d |  |
| 115 | 7.2 | Deploy to PROD |  | 0.5d | 2008-10-17 | 2008-10-17 | 114 | 0d |  |
| 116 | 7.3 | Verify PROD Deployment |  | 3d | 2008-10-20 | 2008-10-22 | 115 | 0d |  |
| 117 | 7.4 | Milestone: Complete PROD deployment activities | milestone | 0d | 2008-10-22 | 2008-10-22 | 116 | 0d |  |
| 118 | 8 | Milestone: Complete 2.1.1 | milestone | 0d | 2008-10-22 | 2008-10-22 | 117 | 0d |  |
